# 理财产品管理系统

Schedule from MS Project, 2018-10-08 to 2019-07-25, costs in ￥, A marks actual dates.

## Calendars

- 标准: Mon-Fri 08:00-12:00, 13:00-17:00; Sat-Sun off. Exceptions (off unless hours are given): 2019-06-08 to 2019-07-12 08:00-12:00, 13:00-17:00 (工作).

## Resources

| Resource | Rate |
| --- | --- |
| 谢方圆 | 10 |
| 莫梓梁 | 7.5 |
| 叶剑豪 | 7.5 |
| 卢俊宇 | 7.5 |
| 杨海航 | 7.5 |
| 高转明 | 7.5 |
| 杨健威 |  |
| 刘杨栋 |  |
| 黄彬彬 |  |
| 曾帅博 |  |
| 吴志祥 |  |
| 林文卓 |  |
| l卢俊宇 |  |
| 高昊 |  |
| 刘鼎力 |  |
| 李振梁 |  |
| w吴志祥 |  |

## Schedule

| ID | WBS | Task | Type | Duration | Start | Finish | Predecessors | Complete | Remaining | Actual start | Total slack | Free slack | Constraint | Resources | Work | Actual work | Cost | Actual cost | 其他参与者 |
| --- | --- | --- | --- | --- | --- | --- | --- | --- | --- | --- | --- | --- | --- | --- | --- | --- | --- | --- | --- |
| 1 | 1 | **启动** |  | 1d | 2019-06-06 08:00 A | 2019-06-06 17:00 |  | 25% | 0.75d |  |  |  |  |  | 24h | 10h | -85 | -80 |  |
| 2 | 1.1 | 识别干系人 | manual | 0.25d | 2019-06-06 08:00 A | 2019-06-06 10:00 |  |  | 0.25d |  |  |  | start no earlier than 2018-10-01 08:00 | 杨健威; 刘杨栋; 黄彬彬 | 6h |  | -15 |  | 林文卓，卢俊宇，刘鼎力，高昊，曾帅博，李振梁，吴志祥 |
| 3 | 1.2 | 制定项目章程 |  | 0.25d | 2019-06-06 08:00 A | 2019-06-06 10:00 A | 2 | 100% |  |  |  |  |  | 刘杨栋; 杨健威; 卢俊宇; 曾帅博; 黄彬彬 | 10h | 10h | -80 | -80 | 林文卓，刘鼎力，高昊，李振梁，吴志祥 |
| 4 | 1.3 | 项目启动会议 |  | 0.25d | 2019-06-06 10:00 | 2019-06-06 12:00 | 3 |  |  |  | 0.5d | 0.25d | start no earlier than 2019-06-06 08:00 | 卢俊宇; 杨健威; 刘杨栋 | 6h |  | -5 |  | 林文卓，刘鼎力，高昊，曾帅博，李振梁，吴志祥，黄彬彬 |
| 5 | 1.4 | 完成项目启动 |  | 0.25d | 2019-06-06 15:00 | 2019-06-06 17:00 | 4 |  |  |  | 0.25d | 0d | finish no earlier than 2019-06-06 17:00 | 卢俊宇 | 2h |  | 15 |  | 杨健威，刘杨栋，黄彬彬 |
| 6 | 2 | **计划** |  | 22d | 2019-06-07 08:00 | 2019-06-28 17:00 |  | 85% | 3.28d | 2019-06-06 08:00 |  |  |  |  | 86h | 30h | -5,905 | -5,780 |  |
| 7 | 2.1 | 确定项目范围 |  | 0.5d | 2019-06-07 08:00 A | 2019-06-07 12:00 | 5 | 50% | 0.25d |  | 0d |  |  | 刘杨栋; 杨健威; 卢俊宇 | 10h | 4h | -25 | -20 |  |
| 8 | 2.2 | 确定组织架构 |  | 0.5d | 2019-06-07 08:00 A | 2019-06-07 15:00 | 7 | 50% | 0.25d |  | 0.95d |  |  | 黄彬彬; 刘杨栋; 杨健威 | 12h | 6h | -40 | -20 |  |
| 9 | 2.3 | 确定交付物 |  | 0.3d | 2019-06-08 14:36 | 2019-06-08 17:00 | 8 |  |  |  | 0d |  | finish no earlier than 2019-06-08 17:00 | 黄彬彬; 刘杨栋; 杨健威; 曾帅博; 林文卓 | 12h |  | -40 |  |  |
| 10 | 2.4 | 确定项目资源 |  | 0.5d | 2019-06-09 08:00 | 2019-06-09 12:00 | 9 |  |  |  | 0d |  | finish no earlier than 2019-06-08 17:00 | 刘杨栋; 卢俊宇; 杨健威 | 12h |  | -10 |  |  |
| 11 | 2.5 | 确定项目预算 | manual | 0.5d | 2019-06-09 08:00 A | 2019-06-09 17:00 | 10 |  | 0.5d |  |  |  | finish no earlier than 2019-06-09 17:00 | 高昊; 杨健威; 曾帅博 | 12h |  |  |  |  |
| 12 | 2.6 | 确定时间里程碑计划 | manual | 0.5d | 2019-06-09 08:00 A | 2019-06-10 12:00 | 11 |  | 0.5d |  |  |  | finish no earlier than 2019-06-09 17:00 | 杨健威 | 4h |  | -80 |  |  |
| 13 | 2.7 | 制定项目计划 |  | 0.5d | 2019-06-10 08:00 A | 2019-06-10 12:00 A | 12 | 100% |  |  |  |  | finish no earlier than 2019-06-10 17:00 | 曾帅博; 黄彬彬; 刘杨栋; 卢俊宇; 杨健威 | 20h | 20h | -40 | -40 |  |
| 14 | 2.8 | 完成项目计划 |  | 0.5d | 2019-06-10 13:00 | 2019-06-10 17:00 | 13 |  |  |  | 18d |  |  | 卢俊宇 | 4h |  | 30 |  |  |
| 15 | 2.9 | **学习SSM开发** |  | 23d | 2019-06-06 08:00 A | 2019-06-28 17:00 A |  | 100% |  |  |  |  |  |  |  |  | -5,700 | -5,700 |  |
| 16 | 2.9.1 | 第1次学习 |  | 3d | 2019-06-06 08:00 A | 2019-06-08 17:00 A | 89 | 100% |  |  |  |  |  |  |  |  | -1,140 | -1,140 |  |
| 17 | 2.9.2 | 第2次学习 |  | 3d | 2019-06-12 08:00 A | 2019-06-14 17:00 A | 90 | 100% |  |  |  |  |  |  |  |  | -1,140 | -1,140 |  |
| 18 | 2.9.3 | 第3次学习 |  | 3d | 2019-06-16 08:00 A | 2019-06-18 17:00 A | 36 | 100% |  |  |  |  |  |  |  |  | -1,140 | -1,140 |  |
| 19 | 2.9.4 | 第4次学习 |  | 3d | 2019-06-20 08:00 A | 2019-06-22 17:00 A | 46 | 100% |  |  |  |  |  |  |  |  | -1,140 | -1,140 |  |
| 20 | 2.9.5 | 第5次学习 |  | 3d | 2019-06-26 08:00 A | 2019-06-28 17:00 A | 63 | 100% |  |  |  |  | finish no earlier than 2019-06-28 17:00 |  |  |  | -1,140 | -1,140 |  |
| 21 | 3 | **执行** |  | 17d? | 2019-06-11 08:00 | 2019-06-27 17:00 |  | 65% | 5.98d? | 2018-11-13 08:00 |  |  |  |  | 468.8h | 244.8h | -5,740 | -5,253.4 |  |
| 22 | 3.1 | **可行性分析** |  | 1d | 2019-06-11 08:00 A | 2019-06-11 17:00 A |  | 100% |  |  |  |  |  |  | 24h | 24h | -80 | -80 |  |
| 23 | 3.1.1 | 完成开题报告与可行性分析 |  | 1d | 2019-06-11 08:00 A | 2019-06-11 17:00 A | 14 | 100% |  |  |  |  |  | 刘杨栋; 卢俊宇; 杨健威 | 24h | 24h | -80 | -80 |  |
| 24 | 3.2 | **需求分析** |  | 3d | 2019-06-11 08:00 A | 2019-06-13 17:00 |  | 17% | 2.5d |  |  |  |  |  | 224h | 56h | -1,000 | -700 |  |
| 25 | 3.2.1 | **功能性需求分析** |  | 3d | 2019-06-11 08:00 | 2019-06-13 17:00 |  |  |  |  |  |  |  |  | 160h |  | -360 |  |  |
| 26 | 3.2.1.1 | 产品录入模块需求分析 |  | 2d | 2019-06-11 08:00 | 2019-06-12 17:00 | 89 |  |  |  | 39d |  |  | 卢俊宇 | 16h |  | 40 |  | 黄彬彬，高昊，杨健威，刘杨栋 |
| 27 | 3.2.1.2 | 产品审核模块需求分析 |  | 2d | 2019-06-11 08:00 | 2019-06-12 17:00 | 89 |  |  |  | 39d |  |  | 高昊; 黄彬彬 | 32h |  | -160 |  | 黄彬彬，高昊，杨健威，刘杨栋 |
| 28 | 3.2.1.3 | 产品配置模块需求分析 |  | 2d | 2019-06-11 08:00 | 2019-06-12 17:00 | 89 |  |  |  | 39d |  |  | 林文卓; 刘杨栋 | 32h |  | -120 |  | 黄彬彬，高昊，杨健威，刘杨栋 |
| 29 | 3.2.1.4 | 管理员模块需求分析 |  | 2d | 2019-06-11 08:00 | 2019-06-12 17:00 | 89 |  |  |  | 39d |  | start no earlier than 2019-06-11 08:00 | 刘鼎力 | 16h |  |  |  | 黄彬彬，高昊，杨健威，刘杨栋 |
| 30 | 3.2.1.5 | 用户评价模块需求分析 |  | 2d | 2019-06-11 08:00 | 2019-06-12 17:00 | 89 |  |  |  | 39d |  |  | 李振梁; 吴志祥 | 32h |  |  |  | 黄彬彬，高昊，杨健威，刘杨栋 |
| 31 | 3.2.1.6 | 展示模块需求分析 |  | 2d | 2019-06-11 08:00 | 2019-06-12 17:00 | 89 |  |  |  | 39d |  |  | 杨健威 | 16h |  |  |  | 黄彬彬，高昊，杨健威，刘杨栋 |
| 32 | 3.2.1.7 | 供应商管理模块需求分析 |  | 2d | 2019-06-11 08:00 | 2019-06-12 17:00 | 89 |  |  |  | 39d |  |  | 曾帅博 | 16h |  | -120 |  | 黄彬彬，高昊，杨健威，刘杨栋 |
| 33 | 3.2.2 | 非功能性需求分析 |  | 1d | 2019-06-12 08:00 A | 2019-06-12 17:00 A | 90 | 100% |  |  |  |  |  | 杨健威; 林文卓; 刘杨栋 | 24h | 24h | -80 | -80 |  |
| 34 | 3.2.3 | 制作原型 |  | 1d | 2019-06-12 08:00 A | 2019-06-12 17:00 A | 33 | 100% |  |  |  |  |  | 高昊 | 8h | 8h | -240 | -240 |  |
| 35 | 3.2.4 | 需求评审会议 |  | 1d | 2019-06-12 08:00 A | 2019-06-12 17:00 A | 33, 34, 17 | 100% |  |  |  |  |  | 高昊; 杨健威; 刘杨栋 | 24h | 24h | -380 | -380 |  |
| 36 | 3.2.5 | 完成需求分析 |  | 1d | 2019-06-13 08:00 | 2019-06-13 17:00 | 35 |  |  |  | 0.2d | 0d |  | 卢俊宇 | 8h |  | 60 |  |  |

| ID | WBS | Task | Type | Duration | Start | Finish | Predecessors | Complete | Remaining | Actual finish | Total slack | Free slack | Constraint | Resources | Work | Actual work | Cost | Actual cost |
| --- | --- | --- | --- | --- | --- | --- | --- | --- | --- | --- | --- | --- | --- | --- | --- | --- | --- | --- |
| 37 | 3.3 | **设计** |  | 5d | 2019-06-13 08:00 A | 2019-06-17 17:00 |  | 65% | 1.73d |  |  |  |  |  | 220.8h | 164.8h | -2,280 | -2,318.4 |
| 38 | 3.3.1 | **概要设计** |  | 2d | 2019-06-13 08:00 A | 2019-06-14 17:00 |  | 90% | 0.2d |  |  |  |  |  | 12.8h | 12.8h | -740 | -738.8 |
| 39 | 3.3.1.1 | **系统结构设计** |  | 1d | 2019-06-13 08:00 A | 2019-06-13 17:00 |  | 100% |  | 2019-06-13 12:00 |  |  |  |  | 8h | 8h | -240 | -240 |
| 40 | 3.3.1.1.1 | 系统逻辑架构 |  | 0.5d | 2019-06-13 08:00 A | 2019-06-13 12:00 A | 36 | 100% |  |  |  |  |  | 吴志祥 | 4h | 4h | -120 | -120 |
| 41 | 3.3.1.1.2 | 系统物理结构 |  | 0.5d | 2019-06-13 08:00 A | 2019-06-13 12:00 A | 40 | 100% |  |  |  |  |  | 吴志祥 | 4h | 4h | -120 | -120 |
| 42 | 3.3.1.2 | 系统接口设计 |  | 0.2d | 2019-06-14 08:00 A | 2019-06-14 09:36 | 36 | 99% | 0d |  | 0d |  |  | 刘杨栋; 黄彬彬 | 1.6h | 1.6h | -40 | -39.6 |
| 43 | 3.3.1.3 | 约束和假定 |  | 0.2d | 2019-06-14 08:00 A | 2019-06-14 09:36 | 42 | 99% | 0d |  | 0d |  |  | 卢俊宇; 刘鼎力 | 1.6h | 1.6h | -40 | -39.6 |
| 44 | 3.3.1.4 | 非功能性设计 |  | 0.2d | 2019-06-14 08:00 A | 2019-06-14 09:36 | 43 | 99% | 0d |  | 37.8d |  |  | 卢俊宇; 刘鼎力 | 1.6h | 1.6h | -40 | -39.6 |
| 45 | 3.3.1.5 | 概要设计评审会议 |  | 0.2d | 2019-06-14 08:00 A | 2019-06-14 09:36 A | 41, 44, 18 | 100% |  |  |  |  |  |  |  |  | -380 | -380 |
| 46 | 3.3.1.6 | 完成概要设计 |  | 0.2d | 2019-06-14 08:00 A | 2019-06-14 11:12 | 45 |  | 0.2d |  | 1.1d | 0.6d |  |  |  |  |  |  |
| 47 | 3.3.2 | **详细设计** |  | 2d | 2019-06-16 08:00 A | 2019-06-17 17:00 |  | 58% | 0.83d |  |  |  |  |  | 180h | 128h | -950 | -960.2 |
| 48 | 3.3.2.1 | 对象模型 |  | 0.5d | 2019-06-16 08:00 A | 2019-06-16 12:00 A | 60 | 100% |  |  |  |  |  | 黄彬彬; 刘杨栋; 卢俊宇; 曾帅博; 杨健威 | 20h | 20h | -180 | -180 |
| 49 | 3.3.2.2 | 产品录入模块详细设计 |  | 1.5d | 2019-06-16 08:00 A | 2019-06-17 12:00 | 48 | 67% | 0.5d |  | 34.5d |  |  | 卢俊宇 | 12h | 8h | 30 | 19.8 |
| 50 | 3.3.2.3 | 产品审核模块详细设计 |  | 1.5d | 2019-06-16 08:00 A | 2019-06-17 12:00 A | 48 | 100% |  |  |  |  |  | 高昊; 黄彬彬 | 24h | 24h | -120 | -120 |
| 51 | 3.3.2.4 | 产品配置模块详细设计 |  | 1.5d | 2019-06-16 08:00 A | 2019-06-17 12:00 A | 48 | 100% |  |  |  |  |  | 林文卓; 刘杨栋 | 24h | 24h | -180 | -180 |
| 52 | 3.3.2.5 | 管理员模块详细设计 |  | 1.5d | 2019-06-16 08:00 A | 2019-06-17 12:00 A | 48 | 100% |  |  |  |  |  | 刘鼎力 | 12h | 12h | -180 | -180 |
| 53 | 3.3.2.6 | 用户评价模块详细分析 |  | 1.5d | 2019-06-16 13:00 | 2019-06-17 17:00 | 48 |  |  |  | 34d |  |  | 李振梁; 吴志祥 | 24h |  |  |  |
| 54 | 3.3.2.7 | 供应商管理模块详细设计 |  | 1.5d | 2019-06-16 13:00 | 2019-06-17 17:00 | 48 |  |  |  | 34d |  |  | 曾帅博 | 12h |  |  |  |
| 55 | 3.3.2.8 | 展示模块详细分析 |  | 1.5d | 2019-06-16 13:00 | 2019-06-17 17:00 | 48 |  |  |  | 34d |  |  | 杨健威 | 12h |  |  |  |
| 56 | 3.3.2.9 | 详细设计评审会议 |  | 1d | 2019-06-17 08:00 A | 2019-06-17 17:00 A | 50, 51, 55, 18 | 100% |  |  |  |  | finish no earlier than 2019-06-17 17:00 | 刘杨栋; 曾帅博; 卢俊宇; 黄彬彬; 杨健威 | 40h | 40h | -320 | -320 |
| 57 | 3.3.2.10 | 完成详细设计 | milestone | 0d | 2019-06-17 08:00 A | 2019-06-17 08:00 A | 56 | 100% |  |  |  |  |  |  |  |  |  |  |
| 58 | 3.3.3 | **系统数据模型设计** |  | 1d | 2019-06-15 08:00 A | 2019-06-15 17:00 |  | 80% | 0.2d |  |  |  |  |  | 28h | 24h | -590 | -619.4 |
| 59 | 3.3.3.1 | 系统概念模型 |  | 0.5d | 2019-06-15 08:00 A | 2019-06-15 12:00 | 46 | 99% | 0d |  | 36.5d |  |  | 刘杨栋; 黄彬彬 | 4h | 4h | -60 | -59.4 |
| 60 | 3.3.3.2 | 系统物理模型 |  | 0.5d | 2019-06-15 08:00 A | 2019-06-15 12:00 A | 59 | 100% |  |  |  |  |  | 黄彬彬 | 4h | 4h | -120 | -120 |
| 61 | 3.3.3.3 | 数据字典 |  | 0.5d | 2019-06-15 08:00 A | 2019-06-15 12:00 A | 60 | 100% |  |  |  |  |  | 曾帅博; 刘杨栋 | 8h | 8h | -60 | -60 |
| 62 | 3.3.3.4 | 系统数据模型设计评审会议 |  | 0.5d | 2019-06-15 08:00 A | 2019-06-15 12:00 A | 61, 19 | 100% |  |  |  |  |  | 吴志祥; 杨健威 | 8h | 8h | -380 | -380 |
| 63 | 3.3.3.5 | 完成系统数据模型设计 |  | 0.5d | 2019-06-15 13:00 | 2019-06-15 17:00 | 62 |  |  |  | 36d |  |  | 卢俊宇 | 4h |  | 30 |  |

| ID | WBS | Task | Type | Duration | Start | Finish | Predecessors | Complete | Remaining | Total slack | Cost | Actual cost |
| --- | --- | --- | --- | --- | --- | --- | --- | --- | --- | --- | --- | --- |
| 64 | 3.4 | **开发** |  | 152.75d | 2018-11-13 08:00 A | 2019-06-11 15:00 |  | 87% | 20.46d | 40.25d | -2,020 | -1,795 |
| 65 | 3.4.1 | 领域模型对象开发 |  | 1d | 2018-11-13 08:00 A | 2018-11-13 17:00 A | 57, 63 | 100% |  |  | -80 | -80 |
| 66 | 3.4.2 | **jsp开发** |  | 151.75d | 2018-11-14 08:00 A | 2019-06-11 15:00 |  | 88% | 18.97d | 40.25d | -360 | -315 |
| 67 | 3.4.2.1 | 认证用户模块jsp开发 |  | 1.5d | 2018-11-14 08:00 A | 2018-11-15 12:00 A | 65 | 100% |  |  | -90 | -90 |
| 68 | 3.4.2.2 | 管理员模块jsp开发 |  | 1.5d | 2018-11-15 13:00 A | 2018-11-16 17:00 A | 67 | 100% |  |  | -90 | -90 |
| 69 | 3.4.2.3 | 教师模块jsp开发 |  | 1.5d | 2018-11-14 08:00 A | 2019-06-11 11:00 | 65 | 75% | 0.38d | 0d | -90 | -67.5 |
| 70 | 3.4.2.4 | 学生模块jsp开发 |  | 1.5d | 2018-11-15 13:00 A | 2019-06-11 15:00 | 69 | 75% | 0.38d | 40.25d | -90 | -67.5 |
| 71 | 3.4.3 | **DAO接口开发** |  | 147.75d | 2018-11-20 08:00 A | 2019-06-11 15:00 |  | 85% | 22.16d | 40.25d | -600 | -510 |
| 72 | 3.4.3.1 | 认证用户模块DAO接口开发 |  | 2d | 2018-11-20 08:00 A | 2018-11-21 17:00 A | 91 | 100% |  |  | -120 | -120 |
| 73 | 3.4.3.2 | 管理员模块DAO接口开发 |  | 2d | 2018-11-22 08:00 A | 2018-11-23 17:00 A | 72 | 100% |  |  | -120 | -120 |
| 74 | 3.4.3.3 | 教师模块DAO接口开发 |  | 3d | 2018-11-20 08:00 A | 2019-06-11 15:00 | 91 | 75% | 0.75d | 40.25d | -180 | -135 |
| 75 | 3.4.3.4 | 学生模块DAO接口开发 |  | 3d | 2018-11-20 08:00 A | 2019-06-11 15:00 | 91 | 75% | 0.75d | 40.25d | -180 | -135 |
| 76 | 3.4.4 | **servlet开发** |  | 142.75d | 2018-11-27 08:00 A | 2019-06-11 15:00 |  | 85% | 21.41d | 40.25d | -600 | -510 |
| 77 | 3.4.4.1 | 认证用户模块servlet开发 |  | 2d | 2018-11-27 08:00 A | 2018-11-28 17:00 A | 92 | 100% |  |  | -120 | -120 |
| 78 | 3.4.4.2 | 管理员模块servlet开发 |  | 2d | 2018-11-29 08:00 A | 2018-11-30 17:00 A | 77 | 100% |  |  | -120 | -120 |
| 79 | 3.4.4.3 | 教师模块servlet开发 |  | 3d | 2018-11-27 08:00 A | 2019-06-11 15:00 | 92 | 75% | 0.75d | 40.25d | -180 | -135 |
| 80 | 3.4.4.4 | 学生模块servlet开发 |  | 3d | 2018-11-27 08:00 A | 2019-06-11 15:00 | 92 | 75% | 0.75d | 40.25d | -180 | -135 |
| 81 | 3.4.5 | 开发评审会议 |  | 1d | 2018-12-03 08:00 A | 2018-12-03 17:00 A | 78, 79, 80 | 100% |  |  | -380 | -380 |
| 82 | 3.4.6 | 完成开发 | milestone | 0d | 2018-12-03 17:00 A | 2018-12-03 17:00 A | 81 | 100% |  |  |  |  |
| 83 | 3.5 | **测试** |  | 4d | 2018-12-04 08:00 A | 2018-12-07 17:00 A |  | 100% |  |  | -240 | -240 |
| 84 | 3.5.1 | 单元测试 |  | 2d | 2018-12-04 08:00 A | 2018-12-05 17:00 A | 82 | 100% |  |  | -120 | -120 |
| 85 | 3.5.2 | 整体测试 |  | 2d | 2018-12-06 08:00 A | 2018-12-07 17:00 A | 84 | 100% |  |  | -120 | -120 |
| 86 | 3.5.3 | 完成测试 | milestone | 0d | 2018-12-07 17:00 A | 2018-12-07 17:00 A | 85 | 100% |  |  |  |  |
| 87 | 3.6 | 部署 |  | 2d | 2018-12-11 08:00 A | 2018-12-12 17:00 A | 93 | 100% |  |  | -120 | -120 |

| ID | WBS | Task | Type | Duration | Start | Finish | Predecessors | Complete | Actual start | Actual finish | Constraint | Cost | Actual cost |
| --- | --- | --- | --- | --- | --- | --- | --- | --- | --- | --- | --- | --- | --- |
| 88 | 4 | **监控** |  | 46d | 2019-06-06 08:00 | 2019-07-25 17:00 |  | 100% | 2018-10-08 08:00 | 2018-12-10 17:00 |  | -1,900 | -1,900 |
| 89 | 4.1 | 第1次例会 |  | 1d | 2018-10-08 08:00 A | 2018-10-08 17:00 A | 23 | 100% |  |  | start no earlier than 2018-10-08 08:00 | -380 | -380 |
| 90 | 4.2 | 第2次例会 |  | 1d | 2018-10-15 08:00 A | 2018-10-15 17:00 A | 27, 32, 16 | 100% |  |  | start no earlier than 2018-10-15 08:00 | -380 | -380 |
| 91 | 4.3 | 第3次例会 |  | 1d | 2018-11-19 08:00 A | 2018-11-19 17:00 A | 68, 70 | 100% |  |  | start no earlier than 2018-11-12 08:00 | -380 | -380 |
| 92 | 4.4 | 第4次例会 |  | 1d | 2018-11-26 08:00 A | 2018-11-26 17:00 A | 73, 74, 75 | 100% |  |  | start no earlier than 2018-11-19 08:00 | -380 | -380 |
| 93 | 4.5 | 第5次例会 |  | 1d | 2018-12-10 08:00 A | 2018-12-10 17:00 A | 86 | 100% |  |  | start no earlier than 2018-11-26 08:00 | -380 | -380 |
| 94 | 5 | **收尾** |  | 3d | 2018-12-13 08:00 A | 2018-12-17 17:00 A |  | 100% |  |  |  | -540 | -540 |
| 95 | 5.1 | 整理文档 |  | 2d | 2018-12-13 08:00 A | 2018-12-14 17:00 A | 87 | 100% |  |  |  | -160 | -160 |
| 96 | 5.2 | 项目展示 |  | 1d | 2018-12-17 08:00 A | 2018-12-17 17:00 A | 95 | 100% |  |  |  | -380 | -380 |
| 97 | 5.3 | 完成项目 | milestone | 0d | 2018-12-17 17:00 A | 2018-12-17 17:00 A | 96 | 100% |  |  |  |  |  |
